# Construction schedule v1.0

Schedule from an IFC model, 2027-03-01 to 2027-10-15.
Agriport A7 Data Centre

## Schedule

| ID | Activity | Type | Duration | Start | Finish | Predecessors | Planned start | Planned finish | Total float | Free float |
| --- | --- | --- | --- | --- | --- | --- | --- | --- | --- | --- |
| 1 | **1. Preparation** |  | 5d | 2027-03-01 | 2027-04-01 |  | 2027-03-01 | 2027-03-05 | 0d |  |
| 1.1 | Prepare site for construction |  | 8d | 2027-03-01 | 2027-03-10 |  |  |  | 0d |  |
| 1.2 | 10 kV utility connections |  | 10d | 2027-03-11 | 2027-03-24 | 1.1 | 2027-03-01 | 2027-03-12 | 122d | 0d |
| 1.3 | Temporary security fencing |  | 3d | 2027-03-25 | 2027-03-31 | 1.2 | 2027-03-01 | 2027-03-03 | 122d | 0d |
| 1.4 | Start of construction | milestone | 0d | 2027-04-01 | 2027-04-01 | 1.3 | 2027-03-01 | 2027-03-01 | 122d |  |
| 2 | **2. Foundations** |  | 5d | 2027-03-16 | 2027-04-30 |  | 2027-03-01 | 2027-03-05 | 0d |  |
| 2.1 | Pile driving, foundation piles |  | 10d | 2027-03-16 | 2027-03-31 | 1.1 SS+11d | 2027-03-01 | 2027-03-12 | 0d |  |
| 2.2 | Foundation beams |  | 8d | 2027-04-01 | 2027-04-12 | 2.1 | 2027-03-01 | 2027-03-10 | 102d | 0d |
| 2.3 | Pour slab on piles |  | 8d | 2027-04-13 | 2027-04-22 | 2.2 | 2027-03-01 | 2027-03-10 | 102d | 0d |
| 2.4 | Cable trays in floor |  | 5d | 2027-04-23 | 2027-04-30 | 2.3 | 2027-03-01 | 2027-03-05 | 102d |  |
| 3 | **3. Structure** |  | 5d | 2027-03-22 | 2027-05-20 |  | 2027-03-01 | 2027-03-05 | 0d |  |
| 3.1 | Precast concrete walls |  | 12d | 2027-03-22 | 2027-04-08 | 2.1 SS | 2027-03-01 | 2027-03-16 | 0d |  |
| 3.2 | Structural steel, roof |  | 8d | 2027-04-09 | 2027-04-20 | 3.1 | 2027-03-01 | 2027-03-10 | 0d |  |
| 3.3 | Sandwich roof panels |  | 8d | 2027-04-21 | 2027-05-03 | 3.2 | 2027-03-01 | 2027-03-10 | 0d |  |
| 3.4 | Raised computer floor |  | 10d | 2027-05-04 | 2027-05-20 | 3.3 | 2027-03-01 | 2027-03-12 | 0d |  |
| 3.5 | Topping out | milestone | 0d | 2027-05-20 | 2027-05-20 | 3.4 | 2027-03-01 | 2027-03-01 | 91d |  |
| 4 | **4. Facade & weathertight** |  | 5d | 2027-05-10 | 2027-06-07 |  | 2027-03-01 | 2027-03-05 | 0d |  |
| 4.1 | Facade insulation and cladding |  | 10d | 2027-05-10 | 2027-05-24 | 3.4 FS-8d | 2027-03-01 | 2027-03-12 | 0d |  |
| 4.2 | Loading docks and doors |  | 5d | 2027-05-25 | 2027-05-31 | 4.1 | 2027-03-01 | 2027-03-05 | 0d |  |
| 4.3 | Roof waterproofing |  | 5d | 2027-06-01 | 2027-06-07 | 4.2, 3.4 FF+2d | 2027-03-01 | 2027-03-05 | 0d |  |
| 4.4 | Wind and weathertight | milestone | 0d | 2027-06-07 | 2027-06-07 | 4.3 | 2027-03-01 | 2027-03-01 | 79d |  |
| 5 | **5. Power & cooling** |  | 5d | 2027-06-08 | 2027-09-22 |  | 2027-03-01 | 2027-03-05 | 0d |  |
| 5.1 | 10 kV transformers |  | 8d | 2027-06-08 | 2027-06-17 | 4.3 | 2027-03-01 | 2027-03-10 | 0d |  |
| 5.2 | UPS systems |  | 10d | 2027-06-18 | 2027-07-01 | 5.1 | 2027-03-01 | 2027-03-12 | 17d | 0d |
| 5.3 | Emergency generators |  | 8d | 2027-07-02 | 2027-07-13 | 5.2 | 2027-03-01 | 2027-03-10 | 17d | 0d |
| 5.4 | Main distribution and PDUs |  | 10d | 2027-07-14 | 2027-08-17 | 5.3 | 2027-03-01 | 2027-03-12 | 17d | 0d |
| 5.5 | Chillers |  | 10d | 2027-08-18 | 2027-08-31 | 5.4 | 2027-03-01 | 2027-03-12 | 17d | 0d |
| 5.6 | CRAH units, data halls |  | 8d | 2027-09-01 | 2027-09-10 | 5.5 | 2027-03-01 | 2027-03-10 | 17d | 0d |
| 5.7 | External cooling towers |  | 8d | 2027-09-13 | 2027-09-22 | 5.6 | 2027-03-01 | 2027-03-10 | 17d |  |

| ID | Activity | Type | Duration | Start | Finish | Predecessors | Planned start | Planned finish | Total float |
| --- | --- | --- | --- | --- | --- | --- | --- | --- | --- |
| 6 | **6. ICT & security** |  | 5d | 2027-07-21 | 2027-09-24 |  | 2027-03-01 | 2027-03-05 | 0d |
| 6.1 | Incoming fibre optics |  | 5d | 2027-07-21 | 2027-08-17 | 5.1 SS+31d | 2027-03-01 | 2027-03-05 | 0d |
| 6.2 | Patch panels and cabling |  | 8d | 2027-08-18 | 2027-08-27 | 6.1 | 2027-03-01 | 2027-03-10 | 0d |
| 6.3 | Gas fire suppression system |  | 5d | 2027-08-30 | 2027-09-03 | 6.2 | 2027-03-01 | 2027-03-05 | 0d |
| 6.4 | Biometric access control |  | 5d | 2027-09-06 | 2027-09-10 | 6.3 | 2027-03-01 | 2027-03-05 | 0d |
| 6.5 | CCTV system |  | 5d | 2027-09-13 | 2027-09-17 | 6.4 | 2027-03-01 | 2027-03-05 | 0d |
| 6.6 | BMS monitoring |  | 5d | 2027-09-20 | 2027-09-24 | 6.5 | 2027-03-01 | 2027-03-05 | 0d |
| 7 | **7. Handover** |  | 5d | 2027-09-27 | 2027-10-15 |  | 2027-03-01 | 2027-03-05 | 0d |
| 7.1 | Test failover scenario |  | 5d | 2027-09-27 | 2027-10-01 | 6.6 | 2027-03-01 | 2027-03-05 | 0d |
| 7.2 | Site finishing |  | 5d | 2027-10-04 | 2027-10-08 | 7.1 | 2027-03-01 | 2027-03-05 | 0d |
| 7.3 | Tier III certification |  | 5d | 2027-10-11 | 2027-10-15 | 7.2 | 2027-03-01 | 2027-03-05 | 0d |
| 7.4 | Handover | milestone | 0d | 2027-10-15 | 2027-10-15 | 7.3 | 2027-03-01 | 2027-03-01 | 0d |
